# ESD 改版

Schedule from a web Gantt chart, 2025-10-28 to 2026-04-30.
Every day is a working day

## Schedule

| ID | WBS | Task | Duration | Start | Finish | Predecessors | Complete | Status |
| --- | --- | --- | --- | --- | --- | --- | --- | --- |
| 2 | 1 | Kickoff | 1d | 2025-10-28 | 2025-10-28 |  | 100% | done |
| 3 | 2 | Mask in | 19d | 2025-10-30 | 2025-11-17 |  | 100% | done |
| 4 | 3 | **Qual. lot** | 154d | 2025-11-19 | 2026-04-21 |  | 17% |  |
| 5 | 3.1 | WAFER PROCESS | 34d | 2025-11-19 | 2025-12-22 |  | 100% | done |
| 6 | 3.2 | PKG+FT | 76d | 2025-12-23 | 2026-03-08 |  |  |  |
| 7 | 3.3 | Bench test | 14d | 2026-03-09 | 2026-03-22 | 6 |  | waiting |
| 8 | 3.4 | RE | 14d | 2026-03-09 | 2026-03-22 | 6 |  | waiting |
| 9 | 3.5 | ESD | 14d | 2026-03-09 | 2026-03-22 | 6 |  | waiting |
| 10 | 3.6 | AE 验证 | 44d | 2026-03-09 | 2026-04-21 | 6 |  | waiting |
| 11 | 4 | RFS meeting | 9d | 2026-04-22 | 2026-04-30 | 10 |  | waiting |
